# National Health Campaign

Schedule from MS Project, 2023-03-02 to 2023-04-14.
Research Programme
ABC Research Ltd.

## Calendars

- Standard: Mon-Fri 08:00-12:00, 13:00-17:00; Sat-Sun off.

## Resources

| Resource | Group |
| --- | --- |
| Joanne Kelly | Management |
| Riona Carr | Executive |
| Mary Breen | Management |
| Tom Joyce | Office Staff |
| Conf Room | Facilities |
| Junior Staff | Office Staff |
| Printing | External |

## Schedule

| ID | WBS | Task | Type | Duration | Start | Finish | Predecessors | Baseline 1 start | Baseline 1 finish | Total slack | Free slack | Resources | Work |
| --- | --- | --- | --- | --- | --- | --- | --- | --- | --- | --- | --- | --- | --- |
| 1 | 1 | **National Health** |  | 31.5d | 2023-03-02 | 2023-04-14 |  | 2023-03-02 | 2023-04-14 | 0d |  |  | 20h |
| 2 | 1.1 | **Survey setup** |  | 31.5d | 2023-03-02 | 2023-04-14 |  | 2023-03-02 | 2023-04-14 | 0d |  |  | 20h |
| 3 | 1.1.1 | **Planning** |  | 2d | 2023-03-02 | 2023-03-03 |  | 2023-03-02 | 2023-03-03 | 0d |  |  | 16h |
| 4 | 1.1.1.1 | Design questionnaire |  | 2d | 2023-03-02 | 2023-03-03 |  | 2023-03-02 | 2023-03-03 | 0d |  | Conf Room | 16h |
| 5 | 1.1.2 | Type questionnaire |  | 1d | 2023-03-06 | 2023-03-06 | 3 | 2023-03-06 | 2023-03-06 | 0d |  |  |  |
| 6 | 1.1.3 | Print questionnaire |  | 1w | 2023-03-07 | 2023-03-13 | 5 | 2023-03-07 | 2023-03-13 | 0d |  |  |  |
| 7 | 1.1.4 | Invite interviewers to briefing meeting |  | 3d | 2023-03-07 | 2023-03-09 | 6SS | 2023-03-07 | 2023-03-09 | 25.5d | 0d |  |  |
| 8 | 1.1.5 | Survey planning complete | milestone | 0d | 2023-03-09 | 2023-03-09 | 7 | 2023-03-09 | 2023-03-09 | 25.5d |  |  |  |
| 9 | 1.1.6 | **Briefing Setup** |  | 9.5d | 2023-03-14 | 2023-03-27 |  | 2023-03-14 | 2023-03-27 | 0d |  |  | 4h |
| 10 | 1.1.6.1 | Book conference room for briefing meeting |  | 4h | 2023-03-14 | 2023-03-14 | 6 | 2023-03-14 | 2023-03-14 | 0d |  | Tom Joyce | 4h |
| 11 | 1.1.6.2 | Contact interviewing locations |  | 2d | 2023-03-14 | 2023-03-15 | 10SS | 2023-03-14 | 2023-03-15 | 0d |  |  |  |
| 12 | 1.1.6.3 | Prepare rosters |  | 4d | 2023-03-16 | 2023-03-21 | 11 | 2023-03-16 | 2023-03-21 | 0d |  |  |  |
| 13 | 1.1.6.4 | Prepare packs for each interviewer |  | 3d | 2023-03-22 | 2023-03-24 | 12 | 2023-03-22 | 2023-03-24 | 0d |  |  |  |
| 14 | 1.1.6.5 | Briefing Meeting with Interviewers |  | 4h | 2023-03-27 | 2023-03-27 | 13 | 2023-03-27 | 2023-03-27 | 0d |  |  |  |
| 15 | 1.1.6.6 | Interviewers briefing complete | milestone | 0d | 2023-03-27 | 2023-03-27 | 14 | 2023-03-27 | 2023-03-27 | 0d |  |  |  |
| 16 | 1.1.7 | **Data Processing** |  | 6d | 2023-03-27 | 2023-04-04 | 9 | 2023-03-27 | 2023-04-04 | 0d |  |  |  |
| 17 | 1.1.7.1 | Prepare Book-in forms |  | 2d | 2023-03-27 | 2023-03-29 |  | 2023-03-27 | 2023-03-29 | 0d |  |  |  |
| 18 | 1.1.7.2 | Check questionnaires |  | 2d | 2023-03-29 | 2023-03-31 | 17 | 2023-03-29 | 2023-03-31 | 0d |  |  |  |
| 19 | 1.1.7.3 | Code questionnaires |  | 1.5d | 2023-03-30 | 2023-03-31 | 18FF | 2023-03-30 | 2023-03-31 | 0d |  |  |  |
| 20 | 1.1.7.4 | Input data in computer |  | 3d | 2023-03-28 | 2023-03-31 | 19FS-3d | 2023-03-28 | 2023-03-31 | 0d |  |  |  |
| 21 | 1.1.7.5 | Analyse the data |  | 2d | 2023-03-31 | 2023-04-04 | 20 | 2023-03-31 | 2023-04-04 | 0d |  |  |  |
| 22 | 1.1.7.6 | Data processing complete | milestone | 0d | 2023-04-04 | 2023-04-04 | 21 | 2023-04-04 | 2023-04-04 | 0d |  |  |  |
| 23 | 1.1.8 | **Interpretation** |  | 8d | 2023-04-04 | 2023-04-14 | 16 | 2023-04-04 | 2023-04-14 | 0d |  |  |  |
| 24 | 1.1.8.1 | Prepare presentation |  | 3d | 2023-04-04 | 2023-04-07 |  | 2023-04-04 | 2023-04-07 | 0d |  |  |  |
| 25 | 1.1.8.2 | Prepare research report |  | 1w | 2023-04-07 | 2023-04-14 | 24 | 2023-04-07 | 2023-04-14 | 0d |  |  |  |
| 26 | 1.1.8.3 | Project complete | milestone | 0d | 2023-04-14 | 2023-04-14 | 25 | 2023-04-14 | 2023-04-14 | 0d |  |  |  |
